# DDL_ProjectSchedule_v1.0_EN

Schedule from MS Project, 2015-09-07 to 2015-12-11.

## Calendars

- Standard: Mon-Fri 08:00-12:00, 13:00-17:00; Sat-Sun off.

## Resources

| Resource |
| --- |
| TEAM |
| ManhLN |
| HuyNM |
| ChinhVC |
| TrungVN |
| DevTeam |
| DesignTeam |
| MaiCTP |
| AnhDD |
| TestTEAM |

## Schedule

| ID | WBS | Task | Type | Duration | Start | Finish | Predecessors | Total slack | Constraint | Resources | Work |
| --- | --- | --- | --- | --- | --- | --- | --- | --- | --- | --- | --- |
| 1 | 1 | **Dandelion (DDL)** |  | 70d? | 2015-09-07 | 2015-12-11 |  | 0d |  |  | 1228h |
| 2 | 1.1 | **Initiation** |  | 10d? | 2015-09-07 | 2015-09-18 |  | 0d |  |  | 340h |
| 3 | 1.1.1 | Form up team roles |  | 0.5d | 2015-09-07 | 2015-09-07 |  | 0d |  | TEAM | 4h |
| 4 | 1.1.2 | Select project idea |  | 0.5d | 2015-09-07 | 2015-09-07 | 3 | 0d |  | TEAM | 4h |
| 5 | 1.1.3 | **Develop project idea** |  | 1d | 2015-09-08 | 2015-09-08 | 4 | 0d |  |  | 8h |
| 6 | 1.1.3.1 | Define project scope |  | 0.5d | 2015-09-08 | 2015-09-08 |  | 0d |  | TEAM | 4h |
| 7 | 1.1.3.2 | Define project features |  | 0.5d | 2015-09-08 | 2015-09-08 | 6 | 0d |  | TEAM | 4h |
| 8 | 1.1.4 | Kick-off meeting |  | 1d? | 2015-09-09 | 2015-09-09 | 5 | 0d |  | TEAM | 8h |
| 9 | 1.1.5 | **Environment** |  | 2d? | 2015-09-10 | 2015-09-11 | 8 | 0d |  |  | 16h |
| 10 | 1.1.5.1 | Create guideline to install and use tools & environments |  | 0.5d? | 2015-09-10 | 2015-09-10 |  | 0d |  | ChinhVC | 4h |
| 11 | 1.1.5.2 | **Install tools & environments** |  | 1d | 2015-09-10 | 2015-09-11 | 10 | 0d |  |  | 8h |
| 12 | 1.1.5.2.1 | Install TortoiseGit |  | 0.5h | 2015-09-10 | 2015-09-10 |  | 0d |  | TEAM | 0.5h |
| 13 | 1.1.5.2.2 | Install Visual Studio 2013 |  | 3h | 2015-09-10 | 2015-09-10 | 12 | 0d |  | TEAM | 3h |
| 14 | 1.1.5.2.3 | Install Microsoft SQL Server 2010 |  | 2h | 2015-09-10 | 2015-09-11 | 13 | 0d |  | TEAM | 2h |
| 15 | 1.1.5.2.4 | Install Microsoft Project 2013 |  | 2h | 2015-09-11 | 2015-09-11 | 14 | 0d |  | TEAM | 2h |
| 16 | 1.1.5.2.5 | Install Sublime Text |  | 0.5h | 2015-09-11 | 2015-09-11 | 15 | 0d |  | TEAM | 0.5h |
| 17 | 1.1.5.3 | Trainning using tools & environments |  | 0.5d | 2015-09-11 | 2015-09-11 | 11 | 0d |  | TEAM | 4h |
| 18 | 1.1.6 | **Technology Research (Part 1)** |  | 5d | 2015-09-14 | 2015-09-18 | 9 | 0d |  |  | 120h |
| 19 | 1.1.6.1 | Study .net MVC 5 |  | 5d | 2015-09-14 | 2015-09-18 |  | 0d | start no earlier than 2015-09-14 | DevTeam | 40h |
| 20 | 1.1.6.2 | Study AngularJS |  | 5d | 2015-09-14 | 2015-09-18 |  | 0d |  | DevTeam | 40h |
| 21 | 1.1.6.3 | Study Bootstraps, HTML5 & CSS3 |  | 5d | 2015-09-14 | 2015-09-18 |  | 0d |  | DesignTeam | 40h |
| 22 | 1.1.7 | SRS/PP Review checklist |  | 0.5d? | 2015-09-10 | 2015-09-10 | 8 | 0d |  | ChinhVC | 4h |
| 23 | 1.1.8 | **Project Introduction** |  | 3d | 2015-09-10 | 2015-09-15 | 22 | 0d |  |  | 28h |
| 24 | 1.1.8.1 | Create Project Introduction |  | 2d | 2015-09-10 | 2015-09-14 |  | 0d |  | HuyNM | 16h |
| 25 | 1.1.8.2 | Review Project Introduction |  | 0.5d | 2015-09-14 | 2015-09-14 | 24 | 0d |  | TrungVN; MaiCTP | 8h |
| 26 | 1.1.8.3 | Update Project Introduction |  | 0.5d | 2015-09-15 | 2015-09-15 | 25 | 0d |  | HuyNM | 4h |
| 27 | 1.1.8.4 | Complete Project Introduction | milestone | 0d | 2015-09-15 | 2015-09-15 | 26 | 0d |  |  |  |

| ID | WBS | Task | Type | Duration | Start | Finish | Predecessors | Total slack | Free slack | Resources | Work |
| --- | --- | --- | --- | --- | --- | --- | --- | --- | --- | --- | --- |
| 28 | 1.1.9 | **Project Plan** |  | 6d? | 2015-09-10 | 2015-09-18 | 22 | 0d |  |  | 76h |
| 29 | 1.1.9.1 | Create Project Plan in MS Word |  | 1.5d | 2015-09-10 | 2015-09-11 |  | 0d |  | ManhLN | 12h |
| 30 | 1.1.9.2 | Create Project Schedule in .mmp file |  | 3d | 2015-09-14 | 2015-09-16 | 29 | 0d |  | ManhLN | 24h |
| 31 | 1.1.9.3 | Create CM Plan |  | 2d | 2015-09-10 | 2015-09-14 |  | 2.5d |  | MaiCTP | 16h |
| 32 | 1.1.9.4 | Review Project Plan, CMPlan, Schedule |  | 0.5d | 2015-09-17 | 2015-09-17 | 31, 30 | 0d |  | ManhLN; MaiCTP | 8h |
| 33 | 1.1.9.5 | Update Project Plan, CMPlan, Schedule |  | 1d? | 2015-09-17 | 2015-09-18 | 32 | 0d |  | MaiCTP; ManhLN | 16h |
| 34 | 1.1.9.6 | Complete Project Plan | milestone | 0d | 2015-09-17 | 2015-09-17 | 32 | 1d |  |  |  |
| 35 | 1.1.10 | **User Requirement Specification** |  | 3d? | 2015-09-15 | 2015-09-18 | 23 | 0d |  |  | 40h |
| 36 | 1.1.10.1 | Create User Requirement Sepecification |  | 2d | 2015-09-15 | 2015-09-17 |  | 0d |  | ChinhVC; AnhDD | 32h |
| 37 | 1.1.10.2 | Review User Requirement Specification |  | 0.5d? | 2015-09-17 | 2015-09-17 | 36 | 0d |  | HuyNM | 4h |
| 38 | 1.1.10.3 | Update User Requirement Specification |  | 0.5d? | 2015-09-18 | 2015-09-18 | 37 | 0d |  | ChinhVC | 4h |
| 39 | 1.1.10.4 | Complete User Requirement Specification | milestone | 0d | 2015-09-18 | 2015-09-18 | 38 | 0d |  |  |  |
| 40 | 1.1.11 | **Q&A Sheet** |  | 3.5d? | 2015-09-10 | 2015-09-15 | 22 | 2.5d |  |  | 28h |
| 41 | 1.1.11.1 | Create Q&A sheet |  | 2d | 2015-09-10 | 2015-09-14 |  | 2.5d | 0d | TrungVN | 16h |
| 42 | 1.1.11.2 | Review Q&A sheet |  | 0.5d? | 2015-09-14 | 2015-09-14 | 41 | 2.5d | 0d | HuyNM | 4h |
| 43 | 1.1.11.3 | Translate Q&A sheet to Japanese |  | 1d | 2015-09-15 | 2015-09-15 | 42 | 2.5d |  | MaiCTP | 8h |
| 44 | 1.1.12 | Create progress report 1 |  | 0.5d | 2015-09-18 | 2015-09-18 | 23, 28, 35, 40 | 0d |  | MaiCTP | 4h |
| 45 | 1.1.13 | Submit progress report 1 | milestone | 0d | 2015-09-18 | 2015-09-18 | 44 | 0d |  | ManhLN |  |
| 46 | 1.2 | **Solution** |  | 24.5d? | 2015-09-21 | 2015-10-23 | 2 | 0d |  |  | 424h |
| 47 | 1.2.1 | **Technology Research (Part 2)** |  | 2d? | 2015-09-21 | 2015-09-22 |  | 22.5d |  |  | 48h |
| 48 | 1.2.1.1 | Code first migration |  | 2d | 2015-09-21 | 2015-09-22 |  | 22.5d |  | ManhLN | 16h |
| 49 | 1.2.1.2 | Restful API on .net MVC |  | 2d | 2015-09-21 | 2015-09-22 |  | 22.5d |  | HuyNM | 16h |
| 50 | 1.2.1.3 | Payment by BaoKim API |  | 1d? | 2015-09-21 | 2015-09-21 |  | 22.5d | 0d | TrungVN | 8h |
| 51 | 1.2.1.4 | Facebook Login API |  | 1d? | 2015-09-22 | 2015-09-22 | 50 | 22.5d |  | TrungVN | 8h |

| ID | WBS | Task | Type | Duration | Start | Finish | Predecessors | Total slack | Free slack | Resources | Work |
| --- | --- | --- | --- | --- | --- | --- | --- | --- | --- | --- | --- |
| 52 | 1.2.2 | **Demo & Prototypes** |  | 1d? | 2015-09-21 | 2015-09-21 | 9 | 23.5d |  |  | 16h |
| 53 | 1.2.2.1 | Create Demo |  | 1d | 2015-09-21 | 2015-09-21 |  | 23.5d |  | DevTeam | 8h |
| 54 | 1.2.2.2 | Create Prototype |  | 1d? | 2015-09-21 | 2015-09-21 |  | 23.5d |  | DesignTeam | 8h |
| 55 | 1.2.3 | **Software Requirement Specification** |  | 2.5d? | 2015-09-21 | 2015-09-23 |  | 3d | 0d |  | 20h |
| 56 | 1.2.3.1 | **Non-functional Requirements Specification** |  | 1.5d? | 2015-09-21 | 2015-09-22 |  | 3d | 0d |  | 12h |
| 57 | 1.2.3.1.1 | Define Security Requirements |  | 0.5d? | 2015-09-21 | 2015-09-21 |  | 3d | 0d | ManhLN | 4h |
| 58 | 1.2.3.1.2 | Define Performane Requirements |  | 0.5d? | 2015-09-21 | 2015-09-21 | 57 | 3d | 0d | HuyNM | 4h |
| 59 | 1.2.3.1.3 | Define User-interface Requirements |  | 0.5d? | 2015-09-22 | 2015-09-22 | 58 | 3d |  | ChinhVC | 4h |
| 60 | 1.2.3.2 | **Functional Requirements Specification** |  | 1d? | 2015-09-22 | 2015-09-23 | 56 | 3d |  |  | 8h |
| 61 | 1.2.3.2.1 | Define User Client Module functional Requirements |  | 0.5d? | 2015-09-22 | 2015-09-22 |  | 3d | 0d | ChinhVC | 4h |
| 62 | 1.2.3.2.2 | Define Admin Module functional Requirments |  | 0.5d? | 2015-09-23 | 2015-09-23 | 61 | 3d |  | HuyNM | 4h |
| 63 | 1.2.4 | **System Design** |  | 11.5d? | 2015-09-21 | 2015-10-06 |  | 0d |  |  | 236h |
| 64 | 1.2.4.1 | Create design review checklist |  | 1d? | 2015-09-21 | 2015-09-21 |  | 0d |  | ChinhVC | 8h |
| 65 | 1.2.4.2 | **Architectural Design** |  | 4.5d? | 2015-09-22 | 2015-09-28 | 64 | 0d |  |  | 52h |
| 66 | 1.2.4.2.1 | Define architectural design |  | 2d | 2015-09-22 | 2015-09-23 |  | 0d |  | ManhLN | 16h |
| 67 | 1.2.4.2.2 | Define system features |  | 2d | 2015-09-22 | 2015-09-23 |  | 0d |  | HuyNM | 16h |
| 68 | 1.2.4.2.3 | Study and choose suitable architectural design |  | 1d | 2015-09-24 | 2015-09-24 | 67, 66 | 0d |  | DevTeam | 8h |
| 69 | 1.2.4.2.4 | Review architectural design |  | 0.5d? | 2015-09-25 | 2015-09-25 | 68 | 0d |  | TEAM | 4h |
| 70 | 1.2.4.2.5 | Update Architectural Design |  | 1d? | 2015-09-25 | 2015-09-28 | 69 | 0d |  | ManhLN | 8h |
| 71 | 1.2.4.2.6 | Complete Architectural Design version 1.0 | milestone | 0d | 2015-09-25 | 2015-09-25 | 69 | 1d |  |  |  |
| 72 | 1.2.4.3 | **Screen design** |  | 8d? | 2015-09-23 | 2015-10-05 | 55 | 14d |  |  | 104h |
| 73 | 1.2.4.3.1 | Create screen flow document |  | 1d? | 2015-09-23 | 2015-09-24 |  | 14d | 0d | DesignTeam | 8h |
| 74 | 1.2.4.3.2 | Create client screen design |  | 5d | 2015-09-24 | 2015-10-01 | 73 | 14d | 0d | AnhDD | 40h |
| 75 | 1.2.4.3.3 | Create admin screen design |  | 5d | 2015-09-24 | 2015-10-01 | 73 | 14d | 0d | MaiCTP | 40h |
| 76 | 1.2.4.3.4 | Review screen design |  | 1d? | 2015-10-01 | 2015-10-02 | 75, 74 | 14d | 0d | ChinhVC | 8h |
| 77 | 1.2.4.3.5 | Update screen design |  | 1d? | 2015-10-02 | 2015-10-05 | 76 | 14d | 0d | DesignTeam | 8h |
| 78 | 1.2.4.3.6 | Complete screen design | milestone | 0d | 2015-10-05 | 2015-10-05 | 77 | 14d |  |  |  |

| ID | WBS | Task | Type | Duration | Start | Finish | Predecessors | Total slack | Free slack | Resources | Work |
| --- | --- | --- | --- | --- | --- | --- | --- | --- | --- | --- | --- |
| 79 | 1.2.4.4 | **Database design** |  | 3d? | 2015-09-23 | 2015-09-28 | 55 | 19d |  |  | 24h |
| 80 | 1.2.4.4.1 | Create database design |  | 2d | 2015-09-23 | 2015-09-25 |  | 19d | 0d | TrungVN | 16h |
| 81 | 1.2.4.4.2 | Review database design |  | 0.5d? | 2015-09-25 | 2015-09-25 | 80 | 19d | 0d | ManhLN | 4h |
| 82 | 1.2.4.4.3 | Update database design |  | 0.5d? | 2015-09-28 | 2015-09-28 | 81 | 19d | 0d | TrungVN | 4h |
| 83 | 1.2.4.4.4 | Complete database design | milestone | 0d | 2015-09-28 | 2015-09-28 | 82 | 19d |  |  |  |
| 84 | 1.2.4.5 | **Class/Component Design** |  | 6d? | 2015-09-28 | 2015-10-06 | 65, 55 | 0d |  |  | 48h |
| 85 | 1.2.4.5.1 | Define Class and Component |  | 1d | 2015-09-28 | 2015-09-29 |  | 0d |  | HuyNM | 8h |
| 86 | 1.2.4.5.2 | Create Class/component design |  | 3d | 2015-09-29 | 2015-10-02 | 85 | 0d |  | DevTeam | 24h |
| 87 | 1.2.4.5.3 | Review Class/component design |  | 1d? | 2015-10-02 | 2015-10-05 | 86 | 0d |  | ManhLN | 8h |
| 88 | 1.2.4.5.4 | Update Class/component design |  | 1d? | 2015-10-05 | 2015-10-06 | 87 | 0d |  | DevTeam | 8h |
| 89 | 1.2.4.5.5 | Complete Class/component design | milestone | 0d | 2015-10-06 | 2015-10-06 | 88 | 0d |  |  |  |
| 90 | 1.2.5 | Create progress report 2 |  | 2d | 2015-10-06 | 2015-10-08 | 84 | 0d |  | MaiCTP | 16h |
| 91 | 1.2.6 | Submit progress report 2 | milestone | 0d | 2015-10-08 | 2015-10-08 | 90 | 0d |  | ManhLN |  |
| 92 | 1.2.7 | **Testing** |  | 10d? | 2015-10-08 | 2015-10-22 | 91 | 0d |  |  | 80h |
| 93 | 1.2.7.1 | Create test plan/case checklists |  | 1d? | 2015-10-08 | 2015-10-09 |  | 0d |  | MaiCTP | 8h |
| 94 | 1.2.7.2 | Create test plan |  | 2d | 2015-10-09 | 2015-10-13 | 93 | 0d |  | TestTEAM | 16h |
| 95 | 1.2.7.3 | Review test plan |  | 1d? | 2015-10-13 | 2015-10-14 | 94 | 0d |  | MaiCTP | 8h |
| 96 | 1.2.7.4 | **Test cases** |  | 6d? | 2015-10-14 | 2015-10-22 | 95 | 0d |  |  | 48h |
| 97 | 1.2.7.4.1 | **Integration test case** |  | 3d? | 2015-10-14 | 2015-10-19 |  | 0d |  |  | 24h |
| 98 | 1.2.7.4.1.1 | Create integration test case |  | 2d | 2015-10-14 | 2015-10-16 |  | 0d |  | AnhDD | 16h |
| 99 | 1.2.7.4.1.2 | Review integration test case |  | 1d? | 2015-10-16 | 2015-10-19 | 98 | 0d |  | MaiCTP | 8h |
| 100 | 1.2.7.4.2 | **System test case** |  | 3d? | 2015-10-19 | 2015-10-22 | 97 | 0d |  |  | 24h |
| 101 | 1.2.7.4.2.1 | Create system test case |  | 2d | 2015-10-19 | 2015-10-21 |  | 0d |  | ChinhVC | 16h |
| 102 | 1.2.7.4.2.2 | Review system test case |  | 1d? | 2015-10-21 | 2015-10-22 | 101 | 0d |  | MaiCTP | 8h |
| 103 | 1.2.8 | Create progress report 3 |  | 1d? | 2015-10-22 | 2015-10-23 | 92 | 0d |  | MaiCTP | 8h |
| 104 | 1.2.9 | Submit progress report 3 | milestone | 0d | 2015-10-23 | 2015-10-23 | 103 | 0d |  | ManhLN |  |

| ID | WBS | Task | Type | Duration | Start | Finish | Predecessors | Total slack | Free slack | Resources | Work |
| --- | --- | --- | --- | --- | --- | --- | --- | --- | --- | --- | --- |
| 105 | 1.3 | **Construction** |  | 29.5d? | 2015-10-23 | 2015-12-03 | 46 | 0d |  |  | 416h |
| 106 | 1.3.1 | **Define Coding Standards** |  | 1d? | 2015-10-23 | 2015-10-26 |  | 0d |  |  | 16h |
| 107 | 1.3.1.1 | Create Coding Convention |  | 1d? | 2015-10-23 | 2015-10-26 |  | 0d |  | ManhLN | 8h |
| 108 | 1.3.1.2 | Create Code & UT Test review checklist |  | 1d? | 2015-10-23 | 2015-10-26 |  | 0d |  | MaiCTP | 8h |
| 109 | 1.3.2 | **Screen Design** |  | 1d? | 2015-10-26 | 2015-10-27 | 106 | 0d |  |  | 8h |
| 110 | 1.3.2.1 | Refine screen design document |  | 1d? | 2015-10-26 | 2015-10-27 |  | 0d |  | ChinhVC | 8h |
| 111 | 1.3.3 | **Coding & Unit test** |  | 22d? | 2015-10-26 | 2015-11-25 | 106 | 5d | 0d |  | 160h |
| 112 | 1.3.3.1 | Structure core modules & source code common |  | 2d | 2015-10-26 | 2015-10-28 |  | 5d | 0d |  |  |
| 113 | 1.3.3.2 | **Client User Module** |  | 12d? | 2015-10-28 | 2015-11-13 | 112, 109 | 5d | 0d |  | 96h |
| 114 | 1.3.3.2.1 | Home Page Module |  | 2d | 2015-10-28 | 2015-10-30 |  | 5d | 0d | ManhLN | 16h |
| 115 | 1.3.3.2.2 | Login/ Logout Module |  | 1d? | 2015-10-30 | 2015-11-02 | 114 | 5d | 0d | ManhLN | 8h |
| 116 | 1.3.3.2.3 | **Project module** |  | 4d | 2015-11-02 | 2015-11-06 | 115 | 5d | 0d |  | 32h |
| 117 | 1.3.3.2.3.1 | Create/manage a project Module |  | 2d | 2015-11-02 | 2015-11-04 |  | 5d | 0d | HuyNM | 16h |
| 118 | 1.3.3.2.3.2 | View/Back a project Module |  | 2d | 2015-11-04 | 2015-11-06 | 117 | 5d |  | HuyNM | 16h |
| 119 | 1.3.3.2.4 | User Personal Page Module |  | 3d | 2015-11-06 | 2015-11-11 | 116 | 5d | 0d | TrungVN | 24h |
| 120 | 1.3.3.2.5 | Search Module |  | 1d? | 2015-11-11 | 2015-11-12 | 119 | 5d | 0d | ChinhVC | 8h |
| 121 | 1.3.3.2.6 | Message Module |  | 1d | 2015-11-12 | 2015-11-13 | 120 | 5d |  | TrungVN | 8h |
| 122 | 1.3.3.3 | **Admin Module** |  | 8d? | 2015-11-13 | 2015-11-25 | 113 | 5d | 0d |  | 64h |
| 123 | 1.3.3.3.1 | Login/ Logout module |  | 1d? | 2015-11-13 | 2015-11-16 |  | 5d | 0d | ManhLN | 8h |
| 124 | 1.3.3.3.2 | Manage Users Module |  | 2d | 2015-11-16 | 2015-11-18 | 123 | 5d | 0d | TrungVN | 16h |
| 125 | 1.3.3.3.3 | Manage Projects Module |  | 2d | 2015-11-18 | 2015-11-20 | 124 | 5d | 0d | HuyNM | 16h |
| 126 | 1.3.3.3.4 | Manage Backings Module |  | 1d? | 2015-11-20 | 2015-11-23 | 125 | 5d | 0d | ChinhVC | 8h |
| 127 | 1.3.3.3.5 | Manage Categories Module |  | 1d? | 2015-11-23 | 2015-11-24 | 126 | 5d | 0d | TrungVN | 8h |
| 128 | 1.3.3.3.6 | Mangage Silder Module |  | 1d? | 2015-11-24 | 2015-11-25 | 127 | 5d |  | HuyNM | 8h |
| 129 | 1.3.3.4 | Complete Coding | milestone | 0d | 2015-11-25 | 2015-11-25 | 113, 122 | 5d |  |  |  |
| 130 | 1.3.4 | Create Progress Report 4 |  | 1d? | 2015-11-25 | 2015-11-26 | 109, 111 | 5.5d | 0d | ManhLN | 8h |
| 131 | 1.3.5 | Submit Progress Report 4 | milestone | 0d | 2015-11-26 | 2015-11-26 | 130 | 5.5d |  | ManhLN |  |

| ID | WBS | Task | Type | Duration | Start | Finish | Predecessors | Total slack | Resources | Work |
| --- | --- | --- | --- | --- | --- | --- | --- | --- | --- | --- |
| 132 | 1.3.6 | **Testing** |  | 26d? | 2015-10-27 | 2015-12-02 |  | 0d |  | 208h |
| 133 | 1.3.6.1 | Update Test Case |  | 1d? | 2015-10-27 | 2015-10-28 | 109 | 0d | MaiCTP | 8h |
| 134 | 1.3.6.2 | **Execute Test Round 1** |  | 12d | 2015-10-28 | 2015-11-13 | 133 | 0d |  | 96h |
| 135 | 1.3.6.2.1 | Execute Component Test |  | 2d | 2015-10-28 | 2015-10-30 |  | 0d | TestTEAM | 16h |
| 136 | 1.3.6.2.2 | Fix bug Component Test |  | 2d | 2015-10-30 | 2015-11-03 | 135 | 0d | DevTeam | 16h |
| 137 | 1.3.6.2.3 | Execute Integration Test |  | 2d | 2015-11-03 | 2015-11-05 | 136 | 0d | TestTEAM | 16h |
| 138 | 1.3.6.2.4 | Fix bug Integration Test |  | 2d | 2015-11-05 | 2015-11-09 | 137 | 0d | DevTeam | 16h |
| 139 | 1.3.6.2.5 | Execute System Test |  | 2d | 2015-11-09 | 2015-11-11 | 138 | 0d | TestTEAM | 16h |
| 140 | 1.3.6.2.6 | Fix bug System Test |  | 2d | 2015-11-11 | 2015-11-13 | 139 | 0d | DevTeam | 16h |
| 141 | 1.3.6.3 | Update Test Case |  | 1d | 2015-11-13 | 2015-11-16 | 134 | 0d | MaiCTP | 8h |
| 142 | 1.3.6.4 | **Execute Test Round 2** |  | 11d | 2015-11-16 | 2015-12-01 | 141 | 0d |  | 88h |
| 143 | 1.3.6.4.1 | Execute Component Test |  | 2d | 2015-11-16 | 2015-11-18 |  | 0d | TestTEAM | 16h |
| 144 | 1.3.6.4.2 | Fix bug Component Test |  | 2d | 2015-11-18 | 2015-11-20 | 143 | 0d | DevTeam | 16h |
| 145 | 1.3.6.4.3 | Execute Integration Test |  | 2d | 2015-11-20 | 2015-11-24 | 144 | 0d | TestTEAM | 16h |
| 146 | 1.3.6.4.4 | Fix bug Integration Test |  | 2d | 2015-11-24 | 2015-11-26 | 145 | 0d | DevTeam | 16h |
| 147 | 1.3.6.4.5 | Execute System Test |  | 1d | 2015-11-26 | 2015-11-27 | 146 | 0d | TestTEAM | 8h |
| 148 | 1.3.6.4.6 | Fix bug System Test |  | 2d | 2015-11-27 | 2015-12-01 | 147 | 0d | DevTeam | 16h |
| 149 | 1.3.6.5 | Create Test Report |  | 1d | 2015-12-01 | 2015-12-02 | 134, 142 | 0d | MaiCTP | 8h |
| 150 | 1.3.7 | **Quality Control** |  | 0.5d? | 2015-12-02 | 2015-12-02 | 132, 111 | 0d |  | 8h |
| 151 | 1.3.7.1 | Create Quality Report |  | 0.5d? | 2015-12-02 | 2015-12-02 |  | 0d | MaiCTP | 4h |
| 152 | 1.3.7.2 | Review Quality Report |  | 0.5d? | 2015-12-02 | 2015-12-02 |  | 0d | ManhLN | 4h |
| 153 | 1.3.8 | Create Progress Report 5 |  | 1d? | 2015-12-03 | 2015-12-03 | 150 | 0d | MaiCTP | 8h |
| 154 | 1.3.9 | Submit Progress Report 5 | milestone | 0d | 2015-12-03 | 2015-12-03 | 153 | 0d | ManhLN |  |
| 155 | 1.4 | **Termination** |  | 6d? | 2015-12-04 | 2015-12-11 | 105 | 0d |  | 48h |
| 156 | 1.4.1 | **Final Report Document** |  | 4d? | 2015-12-04 | 2015-12-09 |  | 0d |  | 32h |
| 157 | 1.4.1.1 | Create Final Report document |  | 1d? | 2015-12-04 | 2015-12-04 |  | 0d | TEAM | 8h |
| 158 | 1.4.1.2 | Create Installing Guide |  | 1d | 2015-12-07 | 2015-12-07 | 157 | 0d | HuyNM | 8h |
| 159 | 1.4.1.3 | Create User Guideline |  | 0.5d? | 2015-12-08 | 2015-12-08 | 158 | 0d | ChinhVC | 4h |
| 160 | 1.4.1.4 | Create Project Result Assessment |  | 0.5d? | 2015-12-08 | 2015-12-08 | 159 | 0d | MaiCTP | 4h |
| 161 | 1.4.1.5 | Create Slides for Final Presentation |  | 1d | 2015-12-09 | 2015-12-09 | 160 | 0d | TEAM | 8h |
| 162 | 1.4.1.6 | Submit all Final Documents and Source codes | milestone | 0d | 2015-12-09 | 2015-12-09 | 161 | 0d | ManhLN |  |

| ID | WBS | Task | Type | Duration | Start | Finish | Predecessors | Total slack | Resources | Work |
| --- | --- | --- | --- | --- | --- | --- | --- | --- | --- | --- |
| 163 | 1.4.2 | **Pre-closing** |  | 1d? | 2015-12-10 | 2015-12-10 |  | 0d |  | 8h |
| 164 | 1.4.2.1 | Trainning presentation |  | 1d? | 2015-12-10 | 2015-12-10 | 156 | 0d | TEAM | 8h |
| 165 | 1.4.3 | **Closing** |  | 1d? | 2015-12-11 | 2015-12-11 | 164 | 0d |  | 8h |
| 166 | 1.4.3.1 | Presentation for Capstone Project |  | 1d? | 2015-12-11 | 2015-12-11 |  | 0d | TEAM | 8h |
| 167 | 1.4.3.2 | Complete Project | milestone | 0d | 2015-12-11 | 2015-12-11 | 166 | 0d |  |  |
